Schedule from MS Project, 2011-01-13 to 2012-02-02, A marks actual dates.

## Calendars

- Standard: Mon-Fri 08:00-12:00, 13:00-17:00; Sat-Sun off. Exceptions (off unless hours are given): 2011-05-30, 2011-07-04, 2011-09-05.

## Resources

| Resource |
| --- |
| Prasad |
| Dan |
| Vijay |
| Xiaoling |
| Aynur |
| Greg |
| (Xiaoling) |

## Schedule

| ID | WBS | Task | Type | Duration | Start | Finish | Predecessors | Complete | Remaining | Total slack | Constraint | Resources | Work | Actual work |
| --- | --- | --- | --- | --- | --- | --- | --- | --- | --- | --- | --- | --- | --- | --- |
| 3 | 1 | **SDK 4.2.3** |  | 50.7d | 2011-03-15 A | 2011-05-24 A |  | 100% |  |  |  |  | 392h | 392h |
| 4 | 1.1 | GF 30729 Provide option to generate JUnit Tests for Logical Model Domain classes [already done] | milestone | 0d | 2011-03-15 A | 2011-03-15 A |  | 100% |  |  | start no earlier than 2011-03-15 |  |  |  |
| 5 | 1.2 | GF 30749 Third-Party Jars within the Code Generation Process |  | 5d | 2011-03-15 A | 2011-03-21 A |  | 100% |  |  | start no earlier than 2011-03-15 | Dan [75%] | 30h | 30h |
| 6 | 1.3 | GF 30753 Generation of the "not-null" Attribute with the "property" Element Node (not-null constraints) |  | 3d | 2011-03-30 A | 2011-04-01 A |  | 100% |  |  | start no earlier than 2011-03-30 | Vijay | 24h | 24h |
| 7 | 1.4 | GF 30748 Bi-directional self-associations |  | 5d | 2011-04-04 A | 2011-04-08 A |  | 100% |  |  | start no earlier than 2011-04-04 | Vijay | 40h | 40h |
| 8 | 1.5 | **GF 30510 Support (code generation) for interfaces** |  | 9d | 2011-03-30 A | 2011-04-11 A |  | 100% |  |  |  |  | 72h | 72h |
| 9 | 1.5.1 | Design |  | 2d | 2011-03-30 A | 2011-03-31 A |  | 100% |  |  | start no earlier than 2011-03-30 | Prasad | 16h | 16h |
| 10 | 1.5.2 | XMI Handler |  | 3d | 2011-04-01 A | 2011-04-05 A | 9 | 100% |  |  |  | Prasad | 24h | 24h |
| 11 | 1.5.3 | Code generation |  | 3d | 2011-04-06 A | 2011-04-08 A | 10 | 100% |  |  |  | Prasad | 24h | 24h |
| 12 | 1.5.4 | Test |  | 1d | 2011-04-11 A | 2011-04-11 A | 11 | 100% |  |  |  | Prasad | 8h | 8h |
| 13 | 1.6 | Dev testing and documentation |  | 4d | 2011-04-12 A | 2011-04-15 A | 4, 5, 6, 7, 12 | 100% |  |  |  | Prasad | 32h | 32h |
| 14 | 1.7 | Ivy support (XMI handler) |  | 2d | 2011-04-18 A | 2011-04-19 A | 13 | 100% |  |  |  | Prasad [25%] | 4h | 4h |
| 15 | 1.8 | QA test plan |  | 3d | 2011-04-14 A | 2011-04-18 A | 13FF | 100% |  |  | must start on 2011-04-14 | Xiaoling | 24h | 24h |
| 16 | 1.9 | QA |  | 9d | 2011-04-20 A | 2011-05-02 A | 14, 15 | 100% |  |  |  | Xiaoling | 72h | 72h |
| 17 | 1.10 | QA support |  | 7d | 2011-04-20 A | 2011-04-28 A | 16SS | 100% |  |  |  | Prasad [25%] | 14h | 14h |
| 18 | 1.11 | Optional QA for 30508, 30510, 30511, 30524 |  | 10d | 2011-05-09 A | 2011-05-24 A | 16 | 100% |  |  | start no earlier than 2011-05-09 | Xiaoling | 80h | 80h |
| 21 | 2 | **SDK 4.2.3 alternate database testing** |  | 18d? | 2011-06-08 A | 2011-07-01 |  | 89% | 1.89d? | 152d |  |  | 112h | 96h |
| 22 | 2.1 | Dev-supplied JUnits on Oracle |  | 2d | 2011-06-14 A | 2011-06-15 A |  | 100% |  |  | start no earlier than 2011-06-14 | Xiaoling | 16h | 16h |
| 23 | 2.2 | Smoke-test and 4.2.3 regression on Oracle |  | 3d | 2011-06-16 A | 2011-06-20 A | 22 | 100% |  |  |  | Xiaoling | 24h | 24h |
| 24 | 2.3 | Postgres installation issues |  | 5d? | 2011-06-08 A | 2011-06-14 A |  | 100% |  |  | start no earlier than 2011-06-08 |  |  |  |
| 25 | 2.4 | Build/deployment problems with Postgres |  | 2d | 2011-06-21 A | 2011-06-22 A | 24, 23 | 100% |  |  |  | Xiaoling | 16h | 16h |
| 26 | 2.5 | Dev-supplied JUnits on Postgres |  | 2d | 2011-06-23 A | 2011-06-24 A | 23, 25, 24 | 100% |  |  |  | Xiaoling | 16h | 16h |
| 27 | 2.6 | Smoke-test and 4.2.3 regression on Postgres |  | 5d | 2011-06-27 A | 2011-07-01 | 26 | 60% | 2d | 148d |  | Xiaoling | 40h | 24h |
| 30 | 3 | **GF 31030 - CSM/UPT patch for EMMES (UPT-Tomcat support)** |  | 44d? | 2011-04-21 A | 2011-06-22 A |  | 100% |  |  |  |  | 149.46h | 149.46h |
| 31 | 3.1 | Installation instructions for Tomcat |  | 3d | 2011-04-21 A | 2011-05-04 A |  | 100% |  |  | start no earlier than 2011-04-21 | Prasad [75%] | 17.46h | 17.46h |
| 32 | 3.2 | UPT fixes |  | 6d | 2011-04-25 A | 2011-05-02 A |  | 100% |  |  | start no earlier than 2011-04-25 | Prasad [75%] | 36h | 36h |
| 33 | 3.3 | packaging |  | 1d | 2011-05-12 A | 2011-05-12 A | 32 | 100% |  |  | start no earlier than 2011-05-12 | Prasad | 8h | 8h |
| 34 | 3.4 | QA (limited to Tomcat and mySQL) |  | 7d | 2011-05-13 A | 2011-05-23 A | 33 | 100% |  |  | start no earlier than 2011-05-04 | Aynur | 56h | 56h |
| 35 | 3.5 | Release activities |  | 2d? | 2011-05-24 A | 2011-05-25 A | 34 | 100% |  |  |  | Prasad | 16h | 16h |

| ID | WBS | Task | Type | Duration | Start | Finish | Predecessors | Complete | Remaining | Total slack | Free slack | Constraint | Resources | Work | Actual work |
| --- | --- | --- | --- | --- | --- | --- | --- | --- | --- | --- | --- | --- | --- | --- | --- |
| 36 | 3.6 | **Alternate distribution packages** |  | 12d | 2011-06-07 A | 2011-06-22 A |  | 100% |  |  |  |  |  | 16h | 16h |
| 37 | 3.6.1 | Smoke-test GUI installer distribution |  | 4d | 2011-06-07 A | 2011-06-10 A |  | 100% |  |  |  | start no earlier than 2011-06-07 | Greg [25%] | 8h | 8h |
| 38 | 3.6.2 | Smoke-test upgrade distribution |  | 4d | 2011-06-15 A | 2011-06-22 A |  | 100% |  |  |  | start no earlier than 2011-06-15 | Greg [25%] | 8h | 8h |
| 41 | 4 | **Technology stack upgrade to 2010 "current" and "future"** |  | 77d? | 2011-05-13 A | 2011-08-31 |  | 22% | 59.81d? | 0d |  |  |  | 644h | 164h |
| 42 | 4.1 | CLM/LLT (base CLM only, CSM relies on CLM) |  | 1d | 2011-05-13 A | 2011-05-13 A |  | 100% |  |  |  | start no earlier than 2011-05-13 | Prasad | 8h | 8h |
| 43 | 4.2 | **CSM/UPT/CGMM** |  | 17d | 2011-05-16 A | 2011-06-08 A | 42 | 100% |  |  |  |  |  | 88h | 88h |
| 44 | 4.2.1 | JDK (migrate - done for a patch) |  | 1d | 2011-05-16 A | 2011-05-16 A |  | 100% |  |  |  | start no earlier than 2011-05-11 | Prasad | 8h | 8h |
| 45 | 4.2.2 | JBoss (migrate - done for a patch) |  | 1d | 2011-05-17 A | 2011-05-17 A | 44 | 100% |  |  |  |  | Prasad | 8h | 8h |
| 46 | 4.2.3 | UPT/Tomcat (migrate - in progress for a patch) |  | 1d | 2011-05-18 A | 2011-05-18 A | 45 | 100% |  |  |  |  | Prasad | 8h | 8h |
| 47 | 4.2.4 | Other |  | 2d | 2011-05-23 A | 2011-05-26 A | 46 | 100% |  |  |  | start no earlier than 2011-05-23 | Prasad | 16h | 16h |
| 48 | 4.2.5 | CGMM |  | 6d | 2011-06-01 A | 2011-06-08 A |  | 100% |  |  |  | start no earlier than 2011-06-01 | Prasad | 48h | 48h |
| 49 | 4.3 | CLM/LLT (LLT relies on CSM) |  | 2d | 2011-05-27 A | 2011-05-31 A | 43 | 100% |  |  |  |  | Prasad | 16h | 16h |
| 50 | 4.4 | XMI Handler (initial) |  | 2d | 2011-06-09 A | 2011-06-10 A |  | 100% |  |  |  | start no earlier than 2011-06-09 | Prasad [50%] | 8h | 8h |
| 51 | 4.5 | **SDK** |  | 13d | 2011-06-14 A | 2011-06-30 | 50 | 78% | 2.89d | 4d | 0d |  |  | 60h | 44h |
| 52 | 4.5.1 | JDK |  | 1d | 2011-06-14 A | 2011-06-14 A |  | 100% |  |  |  | must start on 2011-06-14 | Prasad | 8h | 8h |
| 53 | 4.5.2 | Jboss |  | 1d | 2011-06-15 A | 2011-06-15 A | 52 | 100% |  |  |  |  | Prasad | 8h | 8h |
| 54 | 4.5.3 | Spring |  | 3d | 2011-06-22 A | 2011-06-24 A | 53 | 100% |  |  |  | must start on 2011-06-22 | Prasad [50%] | 12h | 12h |
| 55 | 4.5.4 | Hibernate |  | 2d | 2011-06-27 A | 2011-06-28 | 54 | 50% | 1d | 5d | 0d |  | Prasad | 16h | 8h |
| 56 | 4.5.5 | Other technologies |  | 2d | 2011-06-29 A | 2011-06-30 | 55 | 50% | 1d | 4d |  |  | Prasad | 16h | 8h |
| 57 | 4.6 | XMI Handler (formalized) |  | 1d? | 2011-07-01 | 2011-07-01 | 51 |  |  | 4d | 0d |  | Prasad | 8h |  |
| 58 | 4.7 | SDK "future" - Spring |  | 1d? | 2011-07-11 | 2011-07-11 | 57 |  |  | 0d |  | start no earlier than 2011-07-11 | Prasad | 8h |  |
| 59 | 4.8 | SDK "future" - Hibernate (can be dropped if too many problems) |  | 1d? | 2011-07-12 | 2011-07-12 | 58 |  |  | 0d |  |  | Prasad | 8h |  |
| 60 | 4.9 | CLM/LLT & CSM/UPT/CGMM "future" |  | 3d? | 2011-07-13 | 2011-07-15 | 59 |  |  | 0d |  | start no earlier than 2011-06-16 | Prasad | 24h |  |
| 61 | 4.10 | Workbench ("current" and "future") |  | 5d | 2011-07-18 | 2011-07-22 | 60 |  |  | 0d |  |  | Prasad | 40h |  |
| 62 | 4.11 | ISO 21090 ("current" and "future") |  | 5d | 2011-07-25 | 2011-07-29 | 61 |  |  | 0d |  |  | Prasad | 40h |  |
| 63 | 4.12 | (WebSSO?) | milestone | 0d | 2011-07-29 | 2011-07-29 | 62 |  |  | 23d |  |  |  |  |  |

| ID | WBS | Task | Type | Duration | Start | Finish | Predecessors | Complete | Remaining | Total slack | Free slack | Constraint | Resources | Work | Actual work |
| --- | --- | --- | --- | --- | --- | --- | --- | --- | --- | --- | --- | --- | --- | --- | --- |
| 64 | 4.13 | **QA 2010 "current"** |  | 27d | 2011-06-27 | 2011-08-03 |  |  |  | 0d |  |  |  | 168h |  |
| 65 | 4.13.1 | CLM |  | 3d | 2011-06-27 | 2011-06-29 | 49 |  |  | 14d | 0d | start no earlier than 2011-06-27 | Aynur | 24h |  |
| 66 | 4.13.2 | CSM |  | 6d | 2011-06-30 | 2011-07-08 | 43, 65 |  |  | 14d |  |  | Aynur | 48h |  |
| 67 | 4.13.3 | SDK |  | 6d | 2011-07-05 | 2011-07-12 | 51 |  |  | 7d | 0d | start no earlier than 2011-07-05 | Xiaoling | 48h |  |
| 68 | 4.13.4 | Workbench |  | 3d | 2011-07-13 | 2011-07-15 | 67 |  |  | 7d | 0d | start no earlier than 2011-06-24 | Xiaoling | 24h |  |
| 69 | 4.13.5 | ISO 21090 library |  | 3d | 2011-08-01 | 2011-08-03 | 62 |  |  | 0d |  | start no earlier than 2011-06-24 | Aynur | 24h |  |
| 70 | 4.14 | Release activities 2010 "current" |  | 10d | 2011-08-04 | 2011-08-17 | 64 |  |  | 0d |  |  |  |  |  |
| 71 | 4.15 | Target release date - 2010 "current" | milestone | 0d | 2011-08-11 | 2011-08-11 |  |  |  | 11d |  | start no earlier than 2011-08-11 |  |  |  |
| 72 | 4.16 | **QA 2010 "future"** |  | 16d | 2011-07-18 | 2011-08-08 |  |  |  | 7d |  |  |  | 168h |  |
| 73 | 4.16.1 | CLM |  | 3d | 2011-07-18 | 2011-07-20 | 60 |  |  | 14d | 0d | start no earlier than 2011-06-27 | Aynur | 24h |  |
| 74 | 4.16.2 | CSM |  | 6d | 2011-07-21 | 2011-07-28 | 73, 60 |  |  | 14d |  | start no earlier than 2011-06-24 | Aynur | 48h |  |
| 75 | 4.16.3 | SDK |  | 6d | 2011-07-18 | 2011-07-25 | 59, 68 |  |  | 7d | 0d | start no earlier than 2011-06-24 | Xiaoling | 48h |  |
| 76 | 4.16.4 | Workbench |  | 3d | 2011-07-26 | 2011-07-28 | 75 |  |  | 7d | 0d | start no earlier than 2011-06-24 | Xiaoling | 24h |  |
| 77 | 4.16.5 | ISO 21090 library |  | 3d | 2011-08-04 | 2011-08-08 | 76, 69 |  |  | 7d |  | start no earlier than 2011-06-24 | Aynur | 24h |  |
| 78 | 4.17 | Release activities 2010 "future" |  | 10d | 2011-08-18 | 2011-08-31 | 72, 70 |  |  | 0d |  |  |  |  |  |
| 79 | 4.18 | Target release date - 2010 "future" | milestone | 0d | 2011-08-25 | 2011-08-25 |  |  |  | 1d |  | start no earlier than 2011-08-25 |  |  |  |
| 82 | 5 | **UPT Improvement Plan** |  | 97.25d? | 2011-03-14 A | 2011-07-29 |  | 67% | 32.02d? | 23.75d |  |  |  | 62h | 54h |
| 83 | 5.1 | Analysis of existing trackers |  | 6d | 2011-03-14 A | 2011-03-21 A |  | 100% |  |  |  | start no earlier than 2011-03-14 | Prasad | 48h | 48h |
| 84 | 5.2 | Requirements gathering with NBIA |  | 20d? | 2011-03-28 A | 2011-04-22 A |  | 100% |  |  |  | start no earlier than 2011-03-28 |  |  |  |
| 85 | 5.3 | Draft project plan development (partial) |  | 2d | 2011-05-13 A | 2011-05-16 A | 83, 84FF | 100% |  |  |  | start no earlier than 2011-05-13 |  |  |  |
| 86 | 5.4 | Internal review of proposed features |  | 0.25d | 2011-05-27 A | 2011-05-27 A | 85 | 100% |  |  |  | start no earlier than 2011-05-27 |  |  |  |
| 87 | 5.5 | **Research on use of systems-hosted older versions** |  | 20d? | 2011-06-13 A | 2011-07-11 | 86 | 65% | 7d? | 23.75d | 0d |  |  | 10h | 6h |
| 88 | 5.5.1 | Formulate initial query |  | 1d | 2011-06-13 A | 2011-06-13 A |  | 100% |  |  |  | start no earlier than 2011-06-13 | Greg [25%] | 2h | 2h |
| 89 | 5.5.2 | Lead time and systems response (est.) |  | 10d? | 2011-06-14 A | 2011-06-27 A | 88 | 100% |  |  |  |  |  |  |  |
| 90 | 5.5.3 | Formulate subsequent queries |  | 4d | 2011-06-28 A | 2011-07-01 | 89 | 50% | 2d | 19.75d | 0d |  | Greg [25%] | 8h | 4h |
| 91 | 5.5.4 | Lead time and systems response (est.) |  | 5d? | 2011-07-05 | 2011-07-11 | 90 |  |  | 19.75d |  |  |  |  |  |
| 92 | 5.6 | Follow up review of proposed features |  | 0.25d | 2011-07-12 | 2011-07-12 | 87 |  |  | 19.75d | 0d | start no earlier than 2011-06-01 |  |  |  |
| 93 | 5.7 | Draft project plan (complete) |  | 2d | 2011-07-12 | 2011-07-14 | 92 |  |  | 19.75d | 0d | start no earlier than 2011-06-27 | Greg [25%] | 4h |  |
| 94 | 5.8 | Review plan with user representatives and amend |  | 10d? | 2011-07-14 | 2011-07-28 | 93 |  |  | 19.75d | 0d |  |  |  |  |
| 95 | 5.9 | Plan approval |  | 1d? | 2011-07-28 | 2011-07-29 | 94 |  |  | 19.75d |  |  |  |  |  |

| ID | WBS | Task | Duration | Start | Finish | Predecessors | Complete | Remaining | Total slack | Free slack | Constraint | Resources | Work | Actual work |
| --- | --- | --- | --- | --- | --- | --- | --- | --- | --- | --- | --- | --- | --- | --- |
| 98 | 6 | **UPT enhancements [changes expected]** | 110d | 2011-09-01 | 2012-02-02 | 82, 41 |  |  | 0d |  |  |  |  |  |
| 99 | 6.1 | GF 30436 Better LDAP integration when adding users to UPT | 5d | 2011-09-01 | 2011-09-08 |  |  |  | 0d |  |  |  |  |  |
| 100 | 6.2 | GF 22524 Authentication - DataSource LoginModule | 3d | 2011-09-09 | 2011-09-13 | 99 |  |  | 0d |  |  |  |  |  |
| 101 | 6.3 | GF 1158/2830 Implement paging for UPT | 10d | 2011-09-14 | 2011-09-27 | 100 |  |  | 0d |  |  |  |  |  |
| 102 | 6.4 | GF 22540/29002/30435 Password changes | 10d | 2011-09-28 | 2011-10-11 | 101 |  |  | 0d |  |  |  |  |  |
| 103 | 6.5 | GF 15527 CSM username field length should be increased to 100 characters | 1d | 2011-10-12 | 2011-10-12 | 102 |  |  | 0d |  |  |  |  |  |
| 104 | 6.6 | GF 19369 Indicate UPT /CSM version names in the Application Header after login | 2d | 2011-10-13 | 2011-10-14 | 103 |  |  | 0d |  |  |  |  |  |
| 105 | 6.7 | GF 631/22236 Password recovery | 5d | 2011-10-17 | 2011-10-21 | 104 |  |  | 0d |  |  |  |  |  |
| 106 | 6.8 | GF 30019 User lockout on unsuccessful logins | 5d | 2011-10-24 | 2011-10-28 | 105 |  |  | 0d |  |  |  |  |  |
| 107 | 6.9 | GF 2913 Add an Active Flag for users | 5d | 2011-10-31 | 2011-11-04 | 106 |  |  | 0d |  |  |  |  |  |
| 108 | 6.10 | GF 24404 UPT GUI installer should validate database connection info | 3d | 2011-11-07 | 2011-11-09 | 107 |  |  | 0d |  |  |  |  |  |
| 109 | 6.11 | GF 30372 Change UPT install.properties file to note properties that must be replaced | 1d | 2011-11-10 | 2011-11-10 | 108 |  |  | 0d |  |  |  |  |  |
| 110 | 6.12 | GF 1154/30433 Synchronization between UPT and supported application | 15d | 2011-11-11 | 2011-12-01 | 109 |  |  | 0d |  |  |  |  |  |
| 111 | 6.13 | GF 24965 Documentation changes from CDL installation | 1d | 2011-12-02 | 2011-12-02 | 110 |  |  | 0d |  |  |  |  |  |
| 112 | 6.14 | GF 24116 Need stronger access control | 10d | 2011-12-05 | 2011-12-16 | 111 |  |  | 0d |  |  |  |  |  |
| 113 | 6.15 | GF 2914 Auto-email new user or associated user | 4d | 2011-12-19 | 2011-12-22 | 112 |  |  | 0d |  |  |  |  |  |
| 114 | 6.16 | User friendly UPT UI | 15d | 2011-12-23 | 2012-01-12 | 113 |  |  | 0d |  |  |  |  |  |
| 115 | 6.17 | Customizable UPT UI | 15d | 2012-01-13 | 2012-02-02 | 114 |  |  | 0d |  |  |  |  |  |
| 118 | 7 | **XMI Handler** | 9d? | 2011-07-05 | 2011-07-15 |  |  |  | 143d |  |  |  | 8h |  |
| 119 | 7.1 | Test use of new XMI Handler modeling features with SIW and document results | 4d | 2011-07-05 | 2011-07-08 |  |  |  | 139d | 0d | start no earlier than 2011-07-05 | Greg [25%] | 8h |  |
| 120 | 7.2 | Coordinate official 1.1 release | 5d? | 2011-07-11 | 2011-07-15 | 119 |  |  | 139d |  | start no earlier than 2011-06-29 |  |  |  |
| 121 | 7.3 | Coordinate 1.2 release (tech stack upgrade)? | 5d? | 2011-07-05 | 2011-07-11 | 57 |  |  | 147d |  | start no earlier than 2011-06-30 |  |  |  |
| 123 | 8 | **Analysis** | 89d | 2011-03-22 A | 2011-07-26 |  | 60% | 35.6d | 136d |  |  |  | 182h | 142h |
| 124 | 8.1 | Eclipse/SDK comparison and gap analysis | 5d | 2011-03-22 A | 2011-03-28 A |  | 100% |  |  |  | start no earlier than 2011-03-22 | Prasad | 40h | 40h |
| 125 | 8.2 | User requirements/need for SDK (combined with Eclipse/SDK analysis) | 3d | 2011-04-15 A | 2011-04-19 A |  | 100% |  |  |  | start no earlier than 2011-04-15 | Prasad [75%] | 18h | 18h |
| 126 | 8.3 | caGrid with JBoss 5.1 | 3d | 2011-05-05 A | 2011-05-12 A |  | 100% |  |  |  | start no earlier than 2011-05-05 | Prasad | 24h | 24h |
| 127 | 8.4 | Ideal architecture for separation of SDK and caGrid [incomplete, deferred indefinitely] | 2d | 2011-06-09 A | 2011-06-10 A |  | 100% |  |  |  | start no earlier than 2011-06-09 | Prasad [50%] | 8h | 8h |
| 128 | 8.5 | Test Globus WSRF (caGrid) and JBoss 5.1 | 1d | 2011-06-13 A | 2011-06-13 A |  | 100% |  |  |  | start no earlier than 2011-06-13 | Prasad | 8h | 8h |
| 129 | 8.6 | Evaluate caTissue source with respect to potential use of SDK | 3d | 2011-06-16 A | 2011-06-20 A |  | 100% |  |  |  | start no earlier than 2011-06-16 | Prasad | 24h | 24h |
| 130 | 8.7 | Review and revise caTissue/SDK analysis | 1d | 2011-06-21 A | 2011-06-21 A | 129 | 100% |  |  |  |  | Prasad | 8h | 8h |
| 131 | 8.8 | caTissue Jamboree | 3d | 2011-06-22 A | 2011-06-24 A |  | 100% |  |  |  | finish no earlier than 2011-06-24 | Prasad [50%] | 12h | 12h |
| 132 | 8.9 | Ideal architecture for separation of SDK and caGrid | 2d | 2011-07-06 | 2011-07-07 |  |  |  | 149d |  | start no earlier than 2011-07-06 | Prasad | 16h |  |
| 133 | 8.10 | Investigate problem with caGrid-flavored CQL and SDK 4.4 w/ ISO data types despite workaround | 12d | 2011-07-11 | 2011-07-26 |  |  |  | 136d |  | start no earlier than 2011-07-11 | Dan [25%] | 24h |  |

| ID | WBS | Task | Type | Duration | Start | Finish | Predecessors | Complete | Remaining | Total slack | Free slack | Constraint | Resources | Work | Actual work |
| --- | --- | --- | --- | --- | --- | --- | --- | --- | --- | --- | --- | --- | --- | --- | --- |
| 136 | 9 | **CSM bug fixes (code - no release specified)** |  | 6d | 2011-03-14 A | 2011-03-21 A |  | 100% |  |  |  |  |  | 48h | 48h |
| 137 | 9.1 | GF 29450 CSM – Users locked out due to invalid logins may be (effectively) locked out forever |  | 5d | 2011-03-14 A | 2011-03-18 A |  | 100% |  |  |  | start no earlier than 2011-03-14 | Vijay | 40h | 40h |
| 138 | 9.2 | GF 30372 CSM/UPT - Change UPT install.properties file to note properties that must be replaced |  | 1d | 2011-03-21 A | 2011-03-21 A |  | 100% |  |  |  | start no earlier than 2011-03-21 | Vijay | 8h | 8h |
| 141 | 10 | **SDK 4.1.3 - GF 27529 patch to 4.1.2 (for caBIO)** |  | 0d | 2011-03-14 A | 2011-03-14 |  |  | 0d | 231d |  |  |  |  |  |
| 142 | 10.1 | apply fix for GF 27529 to 4.1.2 [already done] | milestone | 0d | 2011-03-14 A | 2011-03-14 A |  | 100% |  |  |  | start no earlier than 2011-03-14 |  |  |  |
| 143 | 10.2 | QA [low priority] [deferred indefinitely] | milestone | 0d | 2011-03-14 | 2011-03-14 | 142 |  |  | 231d | 0d | start no earlier than 2011-02-17 |  |  |  |
| 144 | 10.3 | Gforge post [no longer applicable] | milestone | 0d | 2011-03-14 | 2011-03-14 | 143 |  |  | 231d |  |  |  |  |  |
| 147 | 11 | **General support to date (only large tasks called out)** |  | 73d | 2011-03-22 A | 2011-07-01 |  | 97% | 2d | 152d |  |  |  | 134h | 131.6h |
| 148 | 11.1 | General support through 6/3 |  | 53d | 2011-03-22 A | 2011-06-03 A |  | 100% |  |  |  | finish no earlier than 2011-06-03 | Dan [25%] | 106h | 106h |
| 149 | 11.2 | General support 6/6-6/10 |  | 5d | 2011-06-06 A | 2011-06-10 A |  | 100% |  |  |  | start no earlier than 2011-06-06 | Dan [25%] | 10h | 10h |
| 150 | 11.3 | General support 6/13-6/17 |  | 5d | 2011-06-13 A | 2011-06-17 A |  | 100% |  |  |  | start no earlier than 2011-06-13 | Dan [15%] | 6h | 6h |
| 151 | 11.4 | General support 6/20-6/24 |  | 5d | 2011-06-20 A | 2011-06-24 A |  | 100% |  |  |  | start no earlier than 2011-06-20 | Dan [15%] | 6h | 6h |
| 152 | 11.5 | General support 6/27-7/1 |  | 5d | 2011-06-27 A | 2011-07-01 |  | 60% | 2d | 152d |  | start no earlier than 2011-06-27 | Dan [15%] | 6h | 3.6h |
| 155 | 12 | **Project Management to date (only large tasks called out)** |  | 79d | 2011-03-14 A | 2011-07-01 |  | 97% | 2.03d | 152d |  |  |  | 278h | 274h |
| 156 | 12.1 | PM and misc work through 6/3 |  | 59d | 2011-03-14 A | 2011-06-03 A |  | 100% |  |  |  | finish no earlier than 2011-06-03 | Greg [50%] | 236h | 236h |
| 157 | 12.2 | General PM 6/6-6/10 |  | 5d | 2011-06-06 A | 2011-06-10 A |  | 100% |  |  |  | start no earlier than 2011-06-06 | Greg [25%] | 10h | 10h |
| 158 | 12.3 | General PM 6/13-6/17 |  | 5d | 2011-06-13 A | 2011-06-17 A |  | 100% |  |  |  | start no earlier than 2011-06-13 | Greg [25%] | 10h | 10h |
| 159 | 12.4 | Update project management plan |  | 2d | 2011-06-22 A | 2011-06-23 A |  | 100% |  |  |  | start no earlier than 2011-06-22 | Greg [50%] | 8h | 8h |
| 160 | 12.5 | General PM 6/23-6/24 |  | 2d | 2011-06-23 A | 2011-06-24 A |  | 100% |  |  |  | start no earlier than 2011-06-23 | Greg [25%] | 4h | 4h |
| 161 | 12.6 | General PM 6/27-7/1 |  | 5d | 2011-06-27 A | 2011-07-01 |  | 60% | 2d | 152d |  | start no earlier than 2011-06-27 | Greg [25%] | 10h | 6h |
| 164 | 13 | **Other unplanned** |  | 1d? | 2011-01-13 | 2011-01-13 |  |  |  | 272d |  |  |  |  |  |
| 165 | 13.1 | 508 compliance review and plan |  | 1d? | 2011-01-13 | 2011-01-13 |  |  |  | 272d |  | start no earlier than 2011-01-13 |  |  |  |
| 166 | 13.2 | ECCF compliance review and plan |  | 1d? | 2011-01-13 | 2011-01-13 |  |  |  | 272d |  | start no earlier than 2011-01-13 |  |  |  |
| 167 | 13.3 | Effect of NCI CBIIT’s Enterprise Security Program on CSM |  | 1d? | 2011-01-13 | 2011-01-13 |  |  |  | 272d |  | start no earlier than 2011-01-13 |  |  |  |
| 168 | 13.4 | Effect of NCI CBIIT’s Enterprise Security Program on CLM |  | 1d? | 2011-01-13 | 2011-01-13 |  |  |  | 272d |  | start no earlier than 2011-01-13 |  |  |  |
